# Release 3

Schedule from MS Project, 2005-01-03 to 2005-07-29.
Gantthead

## Calendars

- Standard: Mon-Fri 08:00-12:00, 13:00-17:00; Sat-Sun off.

## Schedule

| ID | WBS | Task | Duration | Start | Finish | Predecessors | Total slack | Free slack |
| --- | --- | --- | --- | --- | --- | --- | --- | --- |
| 2 | 1 | **Definition** | 35d | 2005-01-03 | 2005-02-18 |  | 0d |  |
| 3 | 1.1 | Gather Requirements | 25d | 2005-01-03 | 2005-02-04 |  | 0d |  |
| 4 | 1.2 | Analyze Requirements | 10d | 2005-02-07 | 2005-02-18 | 3 | 0d |  |
| 5 | 1.3 | Document Requirements | 2d | 2005-02-07 | 2005-02-08 | 3 | 8d |  |
| 6 | 2 | **Design** | 13d | 2005-02-21 | 2005-03-09 | 2 | 0d |  |
| 7 | 2.1 | Study Requirements | 3d | 2005-02-21 | 2005-02-23 |  | 0d |  |
| 8 | 2.2 | Design and Document High Level Architecture | 10d | 2005-02-24 | 2005-03-09 | 7 | 0d |  |
| 9 | 3 | **Construction** | 24d | 2005-03-10 | 2005-04-12 | 6 | 0d |  |
| 10 | 3.1 | **Feature X** | 20d | 2005-03-10 | 2005-04-06 |  | 4d |  |
| 11 | 3.1.1 | Implement Feature | 15d | 2005-03-10 | 2005-03-30 |  | 4d | 0d |
| 12 | 3.1.2 | Integrated Feature | 2d | 2005-03-31 | 2005-04-01 | 11 | 4d | 0d |
| 13 | 3.1.3 | Test Integrated Feature | 3d | 2005-04-04 | 2005-04-06 | 12 | 4d |  |
| 14 | 3.2 | **Feature Y** | 19d | 2005-03-10 | 2005-04-05 |  | 5d |  |
| 15 | 3.2.1 | Implement Feature | 12d | 2005-03-10 | 2005-03-25 |  | 5d | 0d |
| 16 | 3.2.2 | Integrated Feature | 3d | 2005-03-28 | 2005-03-30 | 15 | 5d | 0d |
| 17 | 3.2.3 | Test Integrated Feature | 4d | 2005-03-31 | 2005-04-05 | 16 | 5d |  |
| 18 | 3.3 | **Feature Z** | 24d | 2005-03-10 | 2005-04-12 |  | 0d |  |
| 19 | 3.3.1 | Implement Feature | 20d | 2005-03-10 | 2005-04-06 |  | 0d |  |
| 20 | 3.3.2 | Integrated Feature | 2d | 2005-04-07 | 2005-04-08 | 19 | 0d |  |
| 21 | 3.3.3 | Test Integrated Feature | 2d | 2005-04-11 | 2005-04-12 | 20 | 0d |  |
| 22 | 4 | **Validation** | 12d | 2005-04-13 | 2005-04-28 | 9 | 0d |  |
| 23 | 4.1 | Prepare Validation Plan | 3d | 2005-04-13 | 2005-04-15 |  | 0d |  |
| 24 | 4.2 | Set up Test Environment | 2d | 2005-04-13 | 2005-04-14 |  | 1d |  |
| 25 | 4.3 | **Execute Validation Plan** | 8d | 2005-04-18 | 2005-04-27 | 24, 23 | 0d |  |
| 26 | 4.3.1 | Raise Defects | 8d | 2005-04-18 | 2005-04-27 |  | 0d |  |
| 27 | 4.3.2 | Fix Defects | 8d | 2005-04-18 | 2005-04-27 |  | 0d |  |
| 28 | 4.4 | Write Test Report | 1d | 2005-04-28 | 2005-04-28 | 25 | 0d |  |

| ID | WBS | Task | Type | Duration | Start | Finish | Predecessors | Total slack | Free slack |
| --- | --- | --- | --- | --- | --- | --- | --- | --- | --- |
| 29 | 5 | **Alpha** |  | 26d | 2005-04-28 | 2005-06-03 | 22 | 0d |  |
| 30 | 5.1 | Tag First Alpha Load | milestone | 0d | 2005-04-28 | 2005-04-28 |  | 0d |  |
| 31 | 5.2 | Install Alpha Load in Test Lab |  | 2d | 2005-04-29 | 2005-05-02 | 30 | 0d |  |
| 32 | 5.3 | Execute Sanity Test |  | 1d | 2005-05-03 | 2005-05-03 | 31 | 0d |  |
| 33 | 5.4 | **Use Application (Soak Time #1)** |  | 15d | 2005-05-04 | 2005-05-24 | 32 | 0d |  |
| 34 | 5.4.1 | Raise Defects |  | 15d | 2005-05-04 | 2005-05-24 |  | 8d |  |
| 35 | 5.4.2 | Raise Change Request and Usability Issues |  | 15d | 2005-05-04 | 2005-05-24 |  | 8d |  |
| 36 | 5.4.3 | Fix Defects, Change Requests and Usability Issues |  | 15d | 2005-05-04 | 2005-05-24 |  | 0d |  |
| 37 | 5.5 | Tag Second Alpha Load | milestone | 0d | 2005-05-24 | 2005-05-24 | 36 | 0d |  |
| 38 | 5.6 | Install Alpha Load in Test Lab |  | 2d | 2005-05-25 | 2005-05-26 | 37 | 0d |  |
| 39 | 5.7 | Execute Sanity Test |  | 1d | 2005-05-27 | 2005-05-27 | 38 | 0d |  |
| 40 | 5.8 | Use Application (Soak Time #2) |  | 5d | 2005-05-30 | 2005-06-03 | 39 | 0d |  |
| 41 | 6 | **Beta** |  | 40d | 2005-06-03 | 2005-07-29 | 29 | 0d |  |
| 42 | 6.1 | Tag First Beta Load | milestone | 0d | 2005-06-03 | 2005-06-03 |  | 35d | 0d |
| 43 | 6.2 | Install Beta Load in Customer's Lab |  | 4d | 2005-06-06 | 2005-06-09 | 42 | 35d | 0d |
| 44 | 6.3 | Execute Sanity Test |  | 1d | 2005-06-10 | 2005-06-10 | 43 | 35d |  |
| 45 | 6.4 | Train Customer |  | 2d | 2005-06-06 | 2005-06-07 |  | 0d |  |
| 46 | 6.5 | **Let Customer Use Application (Soak Time #3)** |  | 30d | 2005-06-08 | 2005-07-19 | 45 | 0d |  |
| 47 | 6.5.1 | Raise Defects |  | 30d | 2005-06-08 | 2005-07-19 |  | 8d |  |
| 48 | 6.5.2 | Raise Change Request and Usability Issues |  | 30d | 2005-06-08 | 2005-07-19 |  | 8d |  |
| 49 | 6.5.3 | Fix Defects, Change Requests and Usability Issues |  | 30d | 2005-06-08 | 2005-07-19 |  | 0d |  |
| 50 | 6.6 | Tag Second Beta Load | milestone | 0d | 2005-07-19 | 2005-07-19 | 49 | 0d |  |
| 51 | 6.7 | Install Beta Load in Customer's Lab |  | 2d | 2005-07-20 | 2005-07-21 | 50 | 0d |  |
| 52 | 6.8 | Execute Sanity Test |  | 1d | 2005-07-22 | 2005-07-22 | 51 | 0d |  |
| 53 | 6.9 | Let Customer Use Application (Soak Time #4) |  | 5d | 2005-07-25 | 2005-07-29 | 52 | 0d |  |
| 54 | 7 | Declare General Availability (GA) | milestone | 0d | 2005-07-29 | 2005-07-29 | 41 | 0d |  |
| 55 | 8 | Begin Maintenance Phase of GA Load | milestone | 0d | 2005-07-29 | 2005-07-29 | 54 | 0d |  |
