# JPACE

Schedule from MS Project, 2002-08-26 to 2002-10-28.
jm+co

## Calendars

- Standard: Mon-Fri 08:00-12:00, 13:00-17:00; Sat-Sun off.

## Schedule

| ID | WBS | Task | Duration | Start | Finish | Predecessors | Baseline start | Baseline finish | Baseline duration | Total slack |
| --- | --- | --- | --- | --- | --- | --- | --- | --- | --- | --- |
| 1 | 1 | **JPACE Project Management Process** | 46d | 2002-08-26 | 2002-10-28 |  |  |  |  | 0d |
| 2 | JPACE.PMJ | **Justify Project** | 10d | 2002-08-26 | 2002-09-06 |  | 2002-08-26 | 2002-09-06 | 10d | 0d |
| 3 | JPACE.PMJ.0100 | **Create Business Case** | 6d | 2002-08-26 | 2002-09-02 |  | 2002-08-26 | 2002-09-02 | 6d | 0d |
| 4 | JPACE.PMJ.0100.010 | Align Deliverables with Strategic Business Objectives | 1d | 2002-08-26 | 2002-08-26 |  | 2002-08-26 | 2002-08-26 | 1d | 0d |
| 5 | JPACE.PMJ.0100.020 | Enroll Sponsors | 1d | 2002-08-26 | 2002-08-26 |  | 2002-08-26 | 2002-08-26 | 1d | 0d |
| 6 | JPACE.PMJ.0100.030 | Quantify Financial and Organizational Benefits | 1d | 2002-08-27 | 2002-08-27 | 4, 5 | 2002-08-27 | 2002-08-27 | 1d | 0d |
| 7 | JPACE.PMJ.0100.040 | Identify Project Team Member Requirements and Critical Knowledge Sources | 1d | 2002-08-27 | 2002-08-27 | 4, 5 | 2002-08-27 | 2002-08-27 | 1d | 0d |
| 8 | JPACE.PMJ.0100.050 | Determine Key Risk Factors and Failure Indicators | 1d | 2002-08-27 | 2002-08-27 | 4, 5 | 2002-08-27 | 2002-08-27 | 1d | 0d |
| 9 | JPACE.PMJ.0100.060 | Develop Project Assumptions | 1d | 2002-08-28 | 2002-08-28 | 8, 7, 6 | 2002-08-28 | 2002-08-28 | 1d | 0d |
| 10 | JPACE.PMJ.0100.070 | Estimate Capital and Operational Costs | 1d | 2002-08-29 | 2002-08-29 | 9 | 2002-08-29 | 2002-08-29 | 1d | 0d |
| 11 | JPACE.PMJ.0100.080 | Determine Return on Investment (ROI) | 1d | 2002-08-30 | 2002-08-30 | 10 | 2002-08-30 | 2002-08-30 | 1d | 0d |
| 12 | JPACE.PMJ.0100.090 | Document Business Case | 1d | 2002-09-02 | 2002-09-02 | 11 | 2002-09-02 | 2002-09-02 | 1d | 0d |
| 13 | JPACE.PMJ.0200 | **Present Business Case** | 4d | 2002-09-03 | 2002-09-06 |  | 2002-09-03 | 2002-09-06 | 4d | 0d |
| 14 | JPACE.PMJ.0200.010 | Prepare for Business Case Presentation | 1d | 2002-09-03 | 2002-09-03 | 12 | 2002-09-03 | 2002-09-03 | 1d | 0d |
| 15 | JPACE.PMJ.0200.020 | Review and Refine Presentation with Sponsors | 1d | 2002-09-04 | 2002-09-04 | 14 | 2002-09-04 | 2002-09-04 | 1d | 0d |
| 16 | JPACE.PMJ.0200.030 | Present Business Case for Project Approval and Funding | 1d | 2002-09-05 | 2002-09-05 | 15 | 2002-09-05 | 2002-09-05 | 1d | 0d |
| 17 | JPACE.PMJ.0200.M00 | Milestone PMJ M00 | 1d | 2002-09-06 | 2002-09-06 | 16 | 2002-09-06 | 2002-09-06 | 1d | 0d |
| 18 | JPACE.PMP | **Plan Project** | 16d | 2002-09-09 | 2002-09-30 |  | 2002-09-09 | 2002-09-30 | 16d | 0d |
| 19 | JPACE.PMP.0100 | **Define Project** | 5d | 2002-09-09 | 2002-09-13 |  | 2002-09-09 | 2002-09-13 | 5d | 0d |
| 20 | JPACE.PMP.0100.M00 | Milestone PMP M00 | 1d | 2002-09-09 | 2002-09-09 | 17 | 2002-09-09 | 2002-09-09 | 1d | 0d |
| 21 | JPACE.PMP.0100.010 | Determine Project Objectives | 1d | 2002-09-10 | 2002-09-10 | 20 | 2002-09-10 | 2002-09-10 | 1d | 0d |
| 22 | JPACE.PMP.0100.020 | Define Project Scope | 1d | 2002-09-10 | 2002-09-10 | 20 | 2002-09-10 | 2002-09-10 | 1d | 0d |
| 23 | JPACE.PMP.0100.030 | Define Project Products | 1d | 2002-09-11 | 2002-09-11 | 21, 22 | 2002-09-11 | 2002-09-11 | 1d | 0d |
| 24 | JPACE.PMP.0100.040 | Determine Project Constraints | 1d | 2002-09-11 | 2002-09-11 | 21, 22 | 2002-09-11 | 2002-09-11 | 1d | 33d |
| 25 | JPACE.PMP.0100.050 | Select Project Approach | 1d | 2002-09-12 | 2002-09-12 | 23 | 2002-09-12 | 2002-09-12 | 1d | 0d |
| 26 | JPACE.PMP.0100.060 | Determine Project Standards | 1d | 2002-09-12 | 2002-09-12 | 25SS | 2002-09-12 | 2002-09-12 | 1d | 0d |
| 27 | JPACE.PMP.0100.070 | Assess Project Risks | 1d | 2002-09-13 | 2002-09-13 | 26 | 2002-09-13 | 2002-09-13 | 1d | 0d |

| ID | WBS | Task | Duration | Start | Finish | Predecessors | Baseline start | Baseline finish | Baseline duration | Total slack | Free slack |
| --- | --- | --- | --- | --- | --- | --- | --- | --- | --- | --- | --- |
| 28 | JPACE.PMP.0200 | **Make Project Plan** | 7d | 2002-09-16 | 2002-09-24 |  | 2002-09-16 | 2002-09-24 | 7d | 0d |  |
| 29 | JPACE.PMP.0200.010 | Define Work Breakdown Structure | 1d | 2002-09-16 | 2002-09-16 | 27 | 2002-09-16 | 2002-09-16 | 1d | 0d |  |
| 30 | JPACE.PMP.0200.020 | Determine Activity Dependencies | 1d | 2002-09-17 | 2002-09-17 | 29 | 2002-09-17 | 2002-09-17 | 1d | 1d | 0d |
| 31 | JPACE.PMP.0200.030 | Define Project Milestones | 1d | 2002-09-18 | 2002-09-18 | 30 | 2002-09-18 | 2002-09-18 | 1d | 1d |  |
| 32 | JPACE.PMP.0200.040 | Determine Project Organization | 1d | 2002-09-17 | 2002-09-17 | 29 | 2002-09-17 | 2002-09-17 | 1d | 0d |  |
| 33 | JPACE.PMP.0200.050 | Estimate Effort | 1d | 2002-09-18 | 2002-09-18 | 32 | 2002-09-18 | 2002-09-18 | 1d | 0d |  |
| 34 | JPACE.PMP.0200.060 | Allocate Resources | 1d | 2002-09-19 | 2002-09-19 | 33 | 2002-09-19 | 2002-09-19 | 1d | 0d |  |
| 35 | JPACE.PMP.0200.070 | Schedule Activities | 1d | 2002-09-20 | 2002-09-20 | 31, 34 | 2002-09-20 | 2002-09-20 | 1d | 0d |  |
| 36 | JPACE.PMP.0200.080 | Develop Budget | 1d | 2002-09-23 | 2002-09-23 | 35 | 2002-09-23 | 2002-09-23 | 1d | 0d |  |
| 37 | JPACE.PMP.0200.090 | Refine Project Risk Assessment | 1d | 2002-09-24 | 2002-09-24 | 36 | 2002-09-24 | 2002-09-24 | 1d | 0d |  |
| 38 | JPACE.PMP.0300 | **Obtain Project Plan Approval** | 4d | 2002-09-25 | 2002-09-30 |  | 2002-09-25 | 2002-09-30 | 4d | 0d |  |
| 39 | JPACE.PMP.0300.010 | Assemble Project Plan | 1d | 2002-09-25 | 2002-09-25 | 37 | 2002-09-25 | 2002-09-25 | 1d | 0d |  |
| 40 | JPACE.PMP.0300.020 | Present Project Plan | 1d | 2002-09-26 | 2002-09-26 | 39 | 2002-09-26 | 2002-09-26 | 1d | 0d |  |
| 41 | JPACE.PMP.0300.030 | Agree to Project Plan | 1d | 2002-09-27 | 2002-09-27 | 40 | 2002-09-27 | 2002-09-27 | 1d | 0d |  |
| 42 | JPACE.PMP.0300.M01 | Milestone PMP M01 | 1d | 2002-09-30 | 2002-09-30 | 41 | 2002-09-30 | 2002-09-30 | 1d | 0d |  |
| 43 | JPACE.PMA | **Activate Project** | 5d | 2002-10-01 | 2002-10-07 |  | 2002-08-26 | 2002-10-04 | 30d | 0d |  |
| 44 | JPACE.PMA.0100 | **Publicize Project** | 2d | 2002-10-01 | 2002-10-02 |  | 2002-10-01 | 2002-10-02 | 2d | 0d |  |
| 45 | JPACE.PMA.0100.M00 | Milestone PMA M00 | 1d | 2002-10-01 | 2002-10-01 | 42 | 2002-10-01 | 2002-10-01 | 1d | 0d |  |
| 46 | JPACE.PMA.0100.010 | Inform Stakeholders | 1d | 2002-10-02 | 2002-10-02 | 45 | 2002-10-02 | 2002-10-02 | 1d | 2d |  |
| 47 | JPACE.PMA.0100.020 | Brief Participants | 1d | 2002-10-02 | 2002-10-02 | 45 | 2002-10-02 | 2002-10-02 | 1d | 2d |  |
| 48 | JPACE.PMA.0100.030 | Set Expectations | 1d | 2002-10-02 | 2002-10-02 | 45 | 2002-10-02 | 2002-10-02 | 1d | 2d |  |
| 49 | JPACE.PMA.0200 | **Equip Project** | 3d | 2002-10-02 | 2002-10-04 |  | 2002-10-02 | 2002-10-04 | 3d | 0d |  |
| 50 | JPACE.PMA.0200.010 | Acquire Facilities | 1d | 2002-10-02 | 2002-10-02 | 45 | 2002-10-02 | 2002-10-02 | 1d | 0d |  |
| 51 | JPACE.PMA.0200.020 | Install Equipment | 1d | 2002-10-03 | 2002-10-03 | 50 | 2002-10-03 | 2002-10-03 | 1d | 0d |  |
| 52 | JPACE.PMA.0200.030 | Check Equipment and Facilities | 1d | 2002-10-04 | 2002-10-04 | 51 | 2002-10-04 | 2002-10-04 | 1d | 0d |  |

| ID | WBS | Task | Duration | Start | Finish | Predecessors | Baseline start | Baseline finish | Baseline duration | Total slack | Free slack | Constraint |
| --- | --- | --- | --- | --- | --- | --- | --- | --- | --- | --- | --- | --- |
| 53 | JPACE.PMA.0300 | **Train Project Team** | 4d | 2002-10-02 | 2002-10-07 |  | 2002-08-26 | 2002-10-04 | 30d | 0d |  |  |
| 54 | JPACE.PMA.0300.010 | Identify Training Needs | 1d | 2002-10-02 | 2002-10-02 | 45 | 2002-10-02 | 2002-10-02 | 1d | 0d |  |  |
| 55 | JPACE.PMA.0300.020 | Identify Training Options | 1d | 2002-10-02 | 2002-10-02 | 45 | 2002-10-02 | 2002-10-02 | 1d | 0d |  |  |
| 56 | JPACE.PMA.0300.030 | Schedule Training | 1d | 2002-10-03 | 2002-10-03 | 54, 55 | 2002-10-03 | 2002-10-03 | 1d | 0d |  |  |
| 57 | JPACE.PMA.0300.040 | Obtain Training | 1d | 2002-10-04 | 2002-10-04 | 56 | 2002-10-04 | 2002-10-04 | 1d | 0d |  |  |
| 58 | JPACE.PMA.0300.M01 | Milestone PMA M01 | 1d | 2002-10-07 | 2002-10-07 | 46, 47, 48, 52, 57 | 2002-08-26 | 2002-08-26 | 1d | 0d |  | start no earlier than 2002-10-07 |
| 59 | JPACE.PMC | **Control Project** | 9d | 2002-10-08 | 2002-10-18 |  | 2002-08-26 | 2002-09-05 | 9d | 0d |  |  |
| 60 | JPACE.PMC.0100 | **Assign Project Tasks** | 3d | 2002-10-08 | 2002-10-10 |  | 2002-08-27 | 2002-08-29 | 3d | 0d |  |  |
| 61 | JPACE.PMC.0100.M00 | Milestone PMC M00 | 1d | 2002-10-08 | 2002-10-08 | 58 | 2002-08-27 | 2002-08-27 | 1d | 0d |  |  |
| 62 | JPACE.PMC.0100.010 | Resolve Resource Conflicts | 1d | 2002-10-09 | 2002-10-09 | 61 | 2002-08-28 | 2002-08-28 | 1d | 13d |  |  |
| 63 | JPACE.PMC.0100.020 | Coordinate Shared Objects | 1d | 2002-10-09 | 2002-10-09 | 61 | 2002-08-28 | 2002-08-28 | 1d | 13d |  |  |
| 64 | JPACE.PMC.0100.030 | Monitor Open Issues | 1d | 2002-10-09 | 2002-10-09 | 61 | 2002-08-28 | 2002-08-28 | 1d | 13d |  |  |
| 65 | JPACE.PMC.0100.040 | Obtain Resources | 1d | 2002-10-09 | 2002-10-09 | 61 | 2002-08-28 | 2002-08-28 | 1d | 12d | 0d |  |
| 66 | JPACE.PMC.0100.050 | Assign Resources to Activities | 1d | 2002-10-10 | 2002-10-10 | 65 | 2002-08-29 | 2002-08-29 | 1d | 12d |  |  |
| 67 | JPACE.PMC.0200 | **Motivate Project Participants** | 3d | 2002-10-09 | 2002-10-11 |  | 2002-08-28 | 2002-08-30 | 3d | 11d |  |  |
| 68 | JPACE.PMC.0200.010 | Promote Individual Development | 1d | 2002-10-09 | 2002-10-09 | 61 | 2002-08-28 | 2002-08-28 | 1d | 13d |  |  |
| 69 | JPACE.PMC.0200.020 | Create Incentives for Teamwork | 1d | 2002-10-09 | 2002-10-09 | 61 | 2002-08-28 | 2002-08-28 | 1d | 11d | 0d |  |
| 70 | JPACE.PMC.0200.030 | Monitor Performance | 1d | 2002-10-10 | 2002-10-10 | 69 | 2002-08-29 | 2002-08-29 | 1d | 11d | 0d |  |
| 71 | JPACE.PMC.0200.040 | Acknowledge Performance | 1d | 2002-10-11 | 2002-10-11 | 70 | 2002-08-30 | 2002-08-30 | 1d | 11d |  |  |
| 72 | JPACE.PMC.0300 | **Track Project Progress** | 4d | 2002-10-09 | 2002-10-14 |  | 2002-08-28 | 2002-09-02 | 4d | 0d |  |  |
| 73 | JPACE.PMC.0300.010 | Assess Project State | 1d | 2002-10-09 | 2002-10-09 | 61 | 2002-08-28 | 2002-08-28 | 1d | 0d |  |  |
| 74 | JPACE.PMC.0300.020 | Diagnose Situation | 1d | 2002-10-10 | 2002-10-10 | 73 | 2002-08-29 | 2002-08-29 | 1d | 0d |  |  |
| 75 | JPACE.PMC.0300.030 | Determine Corrective Actions | 1d | 2002-10-11 | 2002-10-11 | 74 | 2002-08-30 | 2002-08-30 | 1d | 0d |  |  |
| 76 | JPACE.PMC.0300.040 | Report Project Status to Sponsor | 1d | 2002-10-14 | 2002-10-14 | 75 | 2002-09-02 | 2002-09-02 | 1d | 3d |  |  |

| ID | WBS | Task | Duration | Start | Finish | Predecessors | Baseline start | Baseline finish | Baseline duration | Total slack | Free slack |
| --- | --- | --- | --- | --- | --- | --- | --- | --- | --- | --- | --- |
| 77 | JPACE.PMC.0400 | **Revise Project Plan** | 5d | 2002-10-14 | 2002-10-18 |  | 2002-08-26 | 2002-09-05 | 9d | 0d |  |
| 78 | JPACE.PMC.0400.010 | Evaluate Alternatives | 1d | 2002-10-14 | 2002-10-14 | 75 | 2002-09-02 | 2002-09-02 | 1d | 0d |  |
| 79 | JPACE.PMC.0400.020 | Assess Project Risks | 1d | 2002-10-15 | 2002-10-15 | 78 | 2002-09-03 | 2002-09-03 | 1d | 0d |  |
| 80 | JPACE.PMC.0400.030 | Prepare Plan Revisions | 1d | 2002-10-16 | 2002-10-16 | 79 | 2002-09-04 | 2002-09-04 | 1d | 0d |  |
| 81 | JPACE.PMC.0400.040 | Obtain Approval for Revisions | 1d | 2002-10-17 | 2002-10-17 | 80 | 2002-09-05 | 2002-09-05 | 1d | 0d |  |
| 82 | JPACE.PMC.0400.M01 | Milestone PMC M01 | 1d | 2002-10-18 | 2002-10-18 | 81, 76 | 2002-08-26 | 2002-08-26 | 1d | 0d |  |
| 83 | JPACE.PME | **End Project** | 6d | 2002-10-21 | 2002-10-28 |  | 2002-08-27 | 2002-09-03 | 6d | 0d |  |
| 84 | JPACE.PME.0100 | **Prepare Completion Report** | 2d | 2002-10-21 | 2002-10-22 |  | 2002-08-27 | 2002-08-28 | 2d | 0d |  |
| 85 | JPACE.PME.0100.M00 | Milestone PME M00 | 1d | 2002-10-21 | 2002-10-21 | 82 | 2002-08-27 | 2002-08-27 | 1d | 0d |  |
| 86 | JPACE.PME.0100.010 | Summarize Project Results | 1d | 2002-10-22 | 2002-10-22 | 85 | 2002-08-28 | 2002-08-28 | 1d | 3d | 0d |
| 87 | JPACE.PME.0100.020 | Identify Lessons Learned | 1d | 2002-10-22 | 2002-10-22 | 85 | 2002-08-28 | 2002-08-28 | 1d | 3d | 0d |
| 88 | JPACE.PME.0100.030 | Collect Project Metrics | 1d | 2002-10-22 | 2002-10-22 | 85 | 2002-08-28 | 2002-08-28 | 1d | 3d | 0d |
| 89 | JPACE.PME.0200 | **Turn Over Results** | 2d | 2002-10-22 | 2002-10-23 |  | 2002-08-28 | 2002-08-29 | 2d | 0d |  |
| 90 | JPACE.PME.0200.010 | Archive Project Products | 1d | 2002-10-22 | 2002-10-22 | 85 | 2002-08-28 | 2002-08-28 | 1d | 0d |  |
| 91 | JPACE.PME.0200.020 | Identify Reusable Objects | 1d | 2002-10-22 | 2002-10-22 | 85 | 2002-08-28 | 2002-08-28 | 1d | 0d |  |
| 92 | JPACE.PME.0200.030 | Accept Project Results | 1d | 2002-10-23 | 2002-10-23 | 91, 90 | 2002-08-29 | 2002-08-29 | 1d | 0d |  |
| 93 | JPACE.PME.0300 | **Release Project Resources** | 4d | 2002-10-23 | 2002-10-28 |  | 2002-08-29 | 2002-09-03 | 4d | 0d |  |
| 94 | JPACE.PME.0300.010 | Review Resource Performance | 1d | 2002-10-23 | 2002-10-23 | 85, 86, 87, 88 | 2002-08-29 | 2002-08-29 | 1d | 3d |  |
| 95 | JPACE.PME.0300.020 | Perform Final Accounting | 1d | 2002-10-24 | 2002-10-24 | 92 | 2002-08-30 | 2002-08-30 | 1d | 0d |  |
| 96 | JPACE.PME.0300.030 | Monitor Personnel Reassignment | 1d | 2002-10-25 | 2002-10-25 | 95 | 2002-09-02 | 2002-09-02 | 1d | 0d |  |
| 97 | JPACE.PME.0300.M01 | Milestone PME M01 | 1d | 2002-10-28 | 2002-10-28 | 96 | 2002-09-03 | 2002-09-03 | 1d | 0d |  |
